# RepiME

Schedule from MS Project, 2023-05-08 to 2023-06-01, 3 hours a day, costs in R$.

## Calendars

- Padrão: Mon-Fri 09:00-12:00, 13:00-18:00; Sat-Sun off. Exceptions (off unless hours are given): 2023-05-13 to 2023-05-14 09:00-12:00, 13:00-18:00.

## Resources

| Resource | Rate |
| --- | --- |
| Adriano | 30 |
| Caio | 30 |
| Breno | 30 |
| João | 30 |
| Martins | 30 |

## Schedule

| ID | WBS | Task | Duration | Start | Finish | Predecessors | Baseline start | Baseline finish | Baseline duration | Total slack | Free slack | Constraint | Resources | Work | Cost | Baseline cost |
| --- | --- | --- | --- | --- | --- | --- | --- | --- | --- | --- | --- | --- | --- | --- | --- | --- |
| 1 | 1 | **Projeto RepiME** | 55.25d? | 2023-05-08 | 2023-06-01 |  | 2022-11-08 | 2022-12-02 | 48.67d? | 0d |  |  |  | 264h | 7,920.02 | 2,890 |
| 2 | 1.1 | **Prospecção** | 2d | 2023-05-08 | 2023-05-08 |  | 2022-11-08 | 2022-11-08 | 0.5d | 0.02d | 0d |  |  | 14h | 420 | 180 |
| 3 | 1.1.1 | **Estudo do tema** | 2d | 2023-05-08 | 2023-05-08 |  | 2022-11-08 | 2022-11-08 | 0.5d | 0.02d |  |  |  | 14h | 420 | 180 |
| 4 | 1.1.1.1 | Estudar Domínio de Aplicação | 1d | 2023-05-08 | 2023-05-08 |  | 2022-11-08 | 2022-11-08 | 0.33d | 0.02d | 0d | start no earlier than 2023-05-08 | Caio | 10h | 300 | 150 |
| 5 | 1.1.1.2 | Divisão de tarefas | 1d | 2023-05-08 | 2023-05-08 | 4 | 2022-11-08 | 2022-11-08 | 0.17d | 0.02d | 0d |  | Caio | 4h | 120 | 30 |
| 6 | 1.2 | **Análise** | 9.67d? | 2023-05-08 | 2023-05-12 | 2 | 2022-11-08 | 2022-11-09 | 4.5d | 0.02d |  |  |  | 43h | 1,290 | 630 |
| 7 | 1.2.1 | **Documento de Requisitos** | 2d | 2023-05-08 | 2023-05-09 |  | 2022-11-08 | 2022-11-08 | 1.5d | 0.02d |  |  |  | 18h | 540 | 150 |
| 8 | 1.2.1.1 | **Elaborar DRE** | 2d | 2023-05-08 | 2023-05-09 | 5 | 2022-11-08 | 2022-11-08 | 0.83d | 0.02d |  |  | Caio; João | 18h | 540 | 120 |
| 9 | 1.2.1.1.1 | Revisar DRE | 1d | 2023-05-08 | 2023-05-09 |  | 2022-11-08 | 2022-11-08 | 0.33d | 0.02d | 0d |  | Caio; João | 4h | 120 | 30 |
| 10 | 1.2.1.1.2 | Submeter DRE para Aprovação do Cliente | 1d | 2023-05-09 | 2023-05-09 | 9 | 2022-11-08 | 2022-11-08 | 0d | 0.02d | 0d |  | Caio; João | 2h | 60 |  |
| 11 | 1.2.2 | **Est. Prel. Tamanho** | 2d | 2023-05-09 | 2023-05-10 |  | 2022-11-08 | 2022-11-09 | 1.67d | 0.02d |  |  |  | 8h | 240 | 150 |
| 12 | 1.2.2.1 | Estimar Tamanho do Projeto | 1d | 2023-05-09 | 2023-05-09 | 10 | 2022-11-08 | 2022-11-08 | 1d | 0.02d | 0d |  | Martins; Breno | 6h | 180 | 90 |
| 13 | 1.2.2.2 | Revisar Estimativa de Tamanho do Projeto | 1d | 2023-05-09 | 2023-05-10 | 12 | 2022-11-08 | 2022-11-09 | 0.67d | 0.02d | 0d |  | Martins; Breno | 2h | 60 | 60 |
| 14 | 1.2.3 | **Est. Prel Cronograma** | 3d | 2023-05-10 | 2023-05-11 |  | 2022-11-09 | 2022-11-09 | 1.33d | 0.02d |  |  |  | 9h | 270 | 120 |
| 15 | 1.2.3.1 | Elaborar Cronograma Preliminar | 2d | 2023-05-10 | 2023-05-10 | 13 | 2022-11-09 | 2022-11-09 | 0.67d | 0.02d | 0d | start no earlier than 2023-05-08 | Martins | 6h | 180 | 60 |
| 16 | 1.2.3.2 | Revisar Cronograma Preliminar | 1d | 2023-05-11 | 2023-05-11 | 15 | 2022-11-09 | 2022-11-09 | 0.67d | 0.02d | 0d |  | Martins | 3h | 90 | 60 |
| 17 | 1.2.4 | **MRB** | 2.67d? | 2023-05-11 | 2023-05-12 |  | 2022-11-08 | 2022-11-09 | 2.33d | 0.02d |  |  |  | 8h | 240 | 210 |
| 18 | 1.2.4.1 | Elaborar MRB | 2d? | 2023-05-11 | 2023-05-12 | 16 | 2022-11-08 | 2022-11-09 | 1.67d | 0.02d | 0d |  | Martins | 6h | 180 | 150 |
| 19 | 1.2.4.2 | Revisar MRB | 0.67d? | 2023-05-12 | 2023-05-12 | 18 | 2022-11-09 | 2022-11-09 | 0.67d | 0.02d | 0d |  | Martins | 2h | 60 | 60 |
| 20 | 1.3 | **Projeto** | 2.19d? | 2023-05-12 | 2023-05-13 |  | 2022-11-09 | 2022-11-10 | 2.33d | 0.02d | 0d |  |  | 12h | 360.02 | 150 |
| 21 | 1.3.1 | **Diagrama de Classes** | 2.19d? | 2023-05-12 | 2023-05-13 |  | 2022-11-09 | 2022-11-10 | 2.33d | 0.02d |  |  |  | 12h | 360.02 | 150 |
| 22 | 1.3.1.1 | Elaborar Diagrama de Classe | 2.19d | 2023-05-12 | 2023-05-13 | 19 | 2022-11-09 | 2022-11-09 | 1d | 0.02d | 0d |  | Adriano; João | 9h | 270.02 | 90 |
| 23 | 1.3.1.2 | Revisar Diagrama de Classe | 0.17d | 2023-05-13 | 2023-05-13 | 22 | 2022-11-09 | 2022-11-10 | 0.67d | 0.52d |  |  | Adriano; João | 1h | 30 | 60 |
| 24 | 1.3.1.3 | Atualizar MRB | 0.33d? | 2023-05-13 | 2023-05-13 | 22 | 2022-11-10 | 2022-11-10 | 0.67d | 0.35d | 0d |  | Adriano; João | 2h | 60 |  |

| ID | WBS | Task | Duration | Start | Finish | Predecessors | Baseline start | Baseline finish | Baseline duration | Total slack | Free slack | Constraint | Resources | Work | Cost | Baseline cost |
| --- | --- | --- | --- | --- | --- | --- | --- | --- | --- | --- | --- | --- | --- | --- | --- | --- |
| 25 | 1.4 | **Planejamento** | 2.89d | 2023-05-13 | 2023-05-14 | 20 | 2022-11-10 | 2022-11-11 | 2.13d? | 0.35d | 0d |  |  | 26h | 780 | 180 |
| 26 | 1.4.1 | Pesquisar Soluções Existentes | 1.78d | 2023-05-13 | 2023-05-13 | 24 | 2022-11-10 | 2022-11-10 | 1d? | 0.35d | 0d | start no earlier than 2023-05-08 | João; Martins; Caio | 16h | 480 | 120 |
| 27 | 1.4.2 | Definir Linguagens e Frameworks | 0.67d | 2023-05-13 | 2023-05-14 | 26 | 2022-11-10 | 2022-11-11 | 0.3d? | 0.35d | 0d |  | João; Martins; Caio | 6h | 180 | 30 |
| 28 | 1.4.3 | Revisar Divisão de tarefas | 0.44d | 2023-05-14 | 2023-05-14 | 27 | 2022-11-11 | 2022-11-11 | 0.17d? | 0.35d | 0d |  | Caio; João; Martins | 4h | 120 | 30 |
| 29 | 1.5 | **Desenvolvimento** | 34.51d? | 2023-05-14 | 2023-05-31 | 25 | 2022-11-14 | 2022-11-24 | 23.13d? | 0d |  |  |  | 136h | 4,080 | 1,470 |
| 30 | 1.5.1 | **Release 01** | 15.51d? | 2023-05-14 | 2023-05-22 |  | 2022-11-14 | 2022-11-21 | 14.83d? | 0d |  |  |  | 70h | 2,100 | 1,470 |
| 31 | 1.5.1.1 | **Implementação** | 11.18d? | 2023-05-14 | 2023-05-18 |  | 2022-11-14 | 2022-11-21 | 14.67d? | 0d |  |  |  | 54h | 1,620 | 1,200 |
| 32 | 1.5.1.1.1 | **Manter Usuário - RC01** | 4.24d | 2023-05-14 | 2023-05-15 |  | 2022-11-14 | 2022-11-15 | 3.67d? | 0.35d |  |  |  | 22h | 660 | 480 |
| 33 | 1.5.1.1.1.1 | Implementar RFS01 | 2.03d | 2023-05-14 | 2023-05-15 | 28 | 2022-11-14 | 2022-11-14 | 0.67d | 0.35d | 0d |  | Adriano [125%]; Martins [80.2%] | 10h | 300 | 120 |
| 34 | 1.5.1.1.1.2 | Implementar RFS02 | 1.77d | 2023-05-15 | 2023-05-15 | 33 | 2022-11-14 | 2022-11-14 | 1d? | 0.35d | 0d |  | Adriano; Martins | 8h | 240 | 120 |
| 35 | 1.5.1.1.1.3 | Implementar RFS03 | 0.33d | 2023-05-15 | 2023-05-15 | 34 | 2022-11-14 | 2022-11-15 | 1d? | 0.35d | 0d |  | Breno; João | 2h | 60 | 120 |
| 36 | 1.5.1.1.1.4 | Implementar RFS04 | 0.33d | 2023-05-15 | 2023-05-15 | 35 | 2022-11-15 | 2022-11-15 | 0.67d? | 0.35d | 0d |  | Breno; João | 2h | 60 | 120 |
| 37 | 1.5.1.1.2 | **Manter Residência - RC02** | 6.93d? | 2023-05-15 | 2023-05-18 |  | 2022-11-15 | 2022-11-16 | 3d | 0d |  |  |  | 32h | 960 | 360 |
| 38 | 1.5.1.1.2.1 | Implementar RFS05 | 2.35d? | 2023-05-15 | 2023-05-16 | 36 | 2022-11-15 | 2022-11-15 | 1d | 0.35d | 0d |  | Adriano; Breno | 12h | 360 | 120 |
| 39 | 1.5.1.1.2.2 | Implementar RFS06 | 3d? | 2023-05-16 | 2023-05-17 | 38 | 2022-11-15 | 2022-11-16 | 1.33d | 0d |  |  | Adriano; Breno | 12h | 360 | 120 |
| 40 | 1.5.1.1.2.3 | Implementar RFS07 | 1d? | 2023-05-17 | 2023-05-17 | 39 | 2022-11-16 | 2022-11-16 | 1d | 0d |  |  | João; Martins | 6h | 180 | 120 |
| 41 | 1.5.1.1.2.4 | Implementar RFS08 | 0.92d | 2023-05-18 | 2023-05-18 | 40 |  |  |  | 0d |  |  | João [57.1%]; Martins [36.4%] | 2h | 60 |  |
| 42 | 1.5.1.2 | **Testes Release 01** | 4.33d? | 2023-05-18 | 2023-05-22 |  | 2022-11-15 | 2022-11-21 | 12.17d? | 0d |  |  |  | 16h | 480 | 270 |
| 43 | 1.5.1.2.1 | Testar RC01 | 2.25d? | 2023-05-18 | 2023-05-19 | 41 | 2022-11-15 | 2022-11-15 | 0.17d | 0d |  |  | Adriano; Breno | 8h | 240 | 30 |
| 44 | 1.5.1.2.2 | Testar RC02 | 1.92d? | 2023-05-19 | 2023-05-22 | 43 | 2022-11-16 | 2022-11-16 | 0.31d | 0d |  |  | Adriano; João | 8h | 240 | 30 |
| 45 | 1.5.2 | **Releases** | 19d | 2023-05-22 | 2023-05-31 | 30 |  |  |  | 0d |  |  |  | 66h | 1,980 |  |
| 46 | 1.5.2.1 | **Implementações** | 15d | 2023-05-22 | 2023-05-29 |  |  |  |  | 0d |  |  |  | 54h | 1,620 |  |
| 47 | 1.5.2.1.1 | **Manter Vagas - RC03** | 4d | 2023-05-22 | 2023-05-23 |  |  |  |  | 0d |  |  |  | 12h | 360 |  |
| 48 | 1.5.2.1.1.1 | Implementar RFS09 | 1d | 2023-05-22 | 2023-05-22 | 44 |  |  |  | 0d |  |  | Martins | 3h | 90 |  |
| 49 | 1.5.2.1.1.2 | Implementar RFS10 | 1d | 2023-05-22 | 2023-05-22 | 48 |  |  |  | 0d |  |  | Martins | 3h | 90 |  |
| 50 | 1.5.2.1.1.3 | Implementar RFS11 | 1d | 2023-05-22 | 2023-05-23 | 49 |  |  |  | 0d |  |  | Martins | 3h | 90 |  |
| 51 | 1.5.2.1.1.4 | Implementar RFS12 | 1d | 2023-05-23 | 2023-05-23 | 50 |  |  |  | 0d |  |  | Martins | 3h | 90 |  |

| ID | WBS | Task | Duration | Start | Finish | Predecessors | Baseline start | Baseline finish | Baseline duration | Total slack | Resources | Work | Cost | Baseline cost |
| --- | --- | --- | --- | --- | --- | --- | --- | --- | --- | --- | --- | --- | --- | --- |
| 52 | 1.5.2.1.2 | **Manter República - RC04** | 4d | 2023-05-23 | 2023-05-25 |  |  |  |  | 0d |  | 12h | 360 |  |
| 53 | 1.5.2.1.2.1 | Implementar RFS13 | 1d | 2023-05-23 | 2023-05-23 | 51 |  |  |  | 0d | Breno | 3h | 90 |  |
| 54 | 1.5.2.1.2.2 | Implementar RFS14 | 1d | 2023-05-23 | 2023-05-24 | 53 |  |  |  | 0d | Breno | 3h | 90 |  |
| 55 | 1.5.2.1.2.3 | Implementar RFS15 | 1d | 2023-05-24 | 2023-05-24 | 54 |  |  |  | 0d | Breno | 3h | 90 |  |
| 56 | 1.5.2.1.2.4 | Implementar RFS16 | 1d | 2023-05-24 | 2023-05-25 | 55 |  |  |  | 0d | Breno | 3h | 90 |  |
| 57 | 1.5.2.1.3 | **Manter Kitnet - RC05** | 4d | 2023-05-25 | 2023-05-26 |  |  |  |  | 0d |  | 12h | 360 |  |
| 58 | 1.5.2.1.3.1 | Implementar RFS17 | 1d | 2023-05-25 | 2023-05-25 | 56 |  |  |  | 0d | João | 3h | 90 |  |
| 59 | 1.5.2.1.3.2 | Implementar RFS18 | 1d | 2023-05-25 | 2023-05-25 | 58 |  |  |  | 0d | João | 3h | 90 |  |
| 60 | 1.5.2.1.3.3 | Implementar RFS19 | 1d | 2023-05-25 | 2023-05-26 | 59 |  |  |  | 0d | João | 3h | 90 |  |
| 61 | 1.5.2.1.3.4 | Implementar RFS20 | 1d | 2023-05-26 | 2023-05-26 | 60 |  |  |  | 0d | João | 3h | 90 |  |
| 62 | 1.5.2.1.4 | **Dashboard - RC06** | 3d | 2023-05-26 | 2023-05-29 |  |  |  |  | 0d |  | 18h | 540 |  |
| 63 | 1.5.2.1.4.1 | Implementar RFS21 | 1d | 2023-05-26 | 2023-05-26 | 61 |  |  |  | 0d | João; Martins | 6h | 180 |  |
| 64 | 1.5.2.1.4.2 | Implementar RFS22 | 1d | 2023-05-26 | 2023-05-29 | 63 |  |  |  | 0d | João; Martins | 6h | 180 |  |
| 65 | 1.5.2.1.4.3 | Implementar RFS23 | 1d | 2023-05-29 | 2023-05-29 | 64 |  |  |  | 0d | João; Martins | 6h | 180 |  |
| 66 | 1.5.2.2 | **Testes Gerais** | 4d | 2023-05-29 | 2023-05-31 |  |  |  |  | 0d |  | 12h | 360 |  |
| 67 | 1.5.2.2.1 | Testar RC03 | 1d | 2023-05-29 | 2023-05-30 | 65 |  |  |  | 0d | Martins | 3h | 90 |  |
| 68 | 1.5.2.2.2 | Testar RC04 | 1d | 2023-05-30 | 2023-05-30 | 67 |  |  |  | 0d | Breno | 3h | 90 |  |
| 69 | 1.5.2.2.3 | Testar RC05 | 1d | 2023-05-30 | 2023-05-30 | 68 |  |  |  | 0d | João | 3h | 90 |  |
| 70 | 1.5.2.2.4 | Testar RC06 | 1d | 2023-05-30 | 2023-05-31 | 69 |  |  |  | 0d | Martins | 3h | 90 |  |
| 71 | 1.6 | **Monitoramento e Controle** | 33.48d? | 2023-05-15 | 2023-05-31 |  | 2022-11-08 | 2022-11-08 | 0.67d | 3d |  | 15h | 450 | 60 |
| 72 | 1.6.1 | Acompanhar Projeto | 1d | 2023-05-31 | 2023-05-31 | 70 | 2022-11-08 | 2022-11-08 | 1.33d? | 3d | Caio | 3h | 90 |  |
| 73 | 1.6.2 | **Gerência de Configuração** | 33.48d? | 2023-05-15 | 2023-05-31 |  | 2022-11-08 | 2022-11-08 | 0d? | 3d |  | 12h | 360 |  |
| 74 | 1.6.2.1 | Elaborar Branch | 1d? | 2023-05-15 | 2023-05-15 | 33 | 2022-11-08 | 2022-11-08 | 1.33d? | 35.48d | João; Martins | 6h | 180 |  |
| 75 | 1.6.2.2 | Realizar Merge da Branch X para a Master | 1d | 2023-05-31 | 2023-05-31 | 70 | 2022-11-21 | 2022-11-22 | 1.56d? | 0d | João; Martins | 6h | 180 | 100 |

| ID | WBS | Task | Duration | Start | Finish | Predecessors | Baseline start | Baseline finish | Baseline duration | Total slack | Resources | Work | Cost | Baseline cost |
| --- | --- | --- | --- | --- | --- | --- | --- | --- | --- | --- | --- | --- | --- | --- |
| 76 | 1.7 | **Fechamento** | 3d? | 2023-05-31 | 2023-06-01 |  | 2022-11-21 | 2022-11-22 | 0.28d? | 0d |  | 18h | 540 | 100 |
| 77 | 1.7.1 | Teste do Sistema | 1d? | 2023-05-31 | 2023-05-31 | 75 | 2022-11-22 | 2022-11-22 | 0.33d | 0d | João; Caio | 6h | 180 |  |
| 78 | 1.7.2 | **Aprovaçao do Cliente** | 2d? | 2023-05-31 | 2023-06-01 |  | 2022-11-22 | 2022-11-22 | 0.8d? | 0d |  | 12h | 360 | 120 |
| 79 | 1.7.2.1 | Controle de Mudanças | 1d? | 2023-05-31 | 2023-06-01 | 77 | 2022-11-22 | 2022-11-22 | 0.8d? | 0d | Breno; Caio | 6h | 180 | 120 |
| 80 | 1.7.2.2 | Realizar Mudanças Solicitas pelo Cliente | 1.33d | 2023-06-01 | 2023-06-01 | 79 |  |  |  | 0d | Adriano; Martins | 6h | 180 |  |
