# REPIMEWEB

Schedule from ProjectLibre, 2023-04-07 to 2023-07-02, 4 hours a day.

## Calendars

- Padrão: Mon-Sun 08:00-12:00, 13:00-17:00.

## Resources

| Resource | Rate |
| --- | --- |
| Não atribuído |  |
| Adriano | 35 |
| Breno | 30 |
| Caio | 45 |
| João | 30 |
| Matheus | 50 |

## Schedule

| ID | WBS | Task | Duration | Start | Finish | Predecessors | Complete | Baseline start | Baseline finish | Constraint | Resources |
| --- | --- | --- | --- | --- | --- | --- | --- | --- | --- | --- | --- |
| 1 | 1 | **Projeto RepiME** | 173.5d? | 2023-04-07 | 2023-07-02 |  | 95% | 2023-04-07 | 2023-06-30 | start no later than 2023-04-06 |  |
| 2 | 1.1 | **Prospecção** | 7.5d | 2023-04-07 | 2023-04-10 |  | 100% | 2023-04-07 | 2023-04-10 | start no later than 2023-04-15 |  |
| 3 | 1.1.1 | **Estudo do tema** | 7.5d | 2023-04-07 | 2023-04-10 |  | 100% | 2023-04-07 | 2023-04-10 | start no later than 2023-04-15 |  |
| 4 | 1.1.1.1 | Estudar Domínio de Aplicação | 2.5d | 2023-04-07 | 2023-04-09 |  | 100% | 2023-04-07 | 2023-04-09 | start no earlier than 2023-04-07 | Caio |
| 5 | 1.1.1.2 | Divisão de Tarefas | 1d | 2023-04-10 | 2023-04-10 | 4 | 100% | 2023-04-10 | 2023-04-10 | start no earlier than 2023-04-07 | Caio |
| 6 | 1.2 | **Análise** | 22d? | 2023-04-11 | 2023-04-21 | 5 | 100% | 2023-04-11 | 2023-04-21 | start no earlier than 2023-04-07 |  |
| 7 | 1.2.1 | **Documento de Requisitos** | 22d? | 2023-04-11 | 2023-04-21 | 5 | 100% | 2023-04-11 | 2023-04-21 | start no earlier than 2023-04-10 |  |
| 8 | 1.2.1.1 | **Elaborar DRE** | 4d | 2023-04-11 | 2023-04-12 | 5 | 100% | 2023-04-11 | 2023-04-12 | start no earlier than 2023-04-09 |  |
| 9 | 1.2.1.1.1 | Revisar DRE | 0.5d | 2023-04-11 | 2023-04-11 | 5 | 100% | 2023-04-11 | 2023-04-11 | start no earlier than 2023-04-09 | Adriano |
| 10 | 1.2.1.1.2 | Submeter DRE para Aprovação do Cliente | 0.5d | 2023-04-12 | 2023-04-12 | 9 | 100% | 2023-04-12 | 2023-04-12 | start no earlier than 2023-04-09 | Breno |
| 11 | 1.2.1.2 | **Est. Prel. Tamanho** | 6d | 2023-04-13 | 2023-04-15 |  | 100% | 2023-04-13 | 2023-04-15 | start no earlier than 2023-04-09 |  |
| 12 | 1.2.1.2.1 | Estimar Tamanho do Projeto | 1.5d | 2023-04-13 | 2023-04-14 | 10 | 100% | 2023-04-13 | 2023-04-14 | start no earlier than 2023-04-09 | Breno |
| 13 | 1.2.1.2.2 | Revisar Estimativa de Tamanho do Projeto | 0.5d | 2023-04-15 | 2023-04-15 | 12 | 100% | 2023-04-15 | 2023-04-15 | start no earlier than 2023-04-09 | Adriano |
| 14 | 1.2.1.3 | **Est. Prel Cronograma** | 6d? | 2023-04-16 | 2023-04-18 |  | 100% | 2023-04-16 | 2023-04-18 | start no earlier than 2023-04-09 |  |
| 15 | 1.2.1.3.1 | Elaborar Cronograma preliminar | 1.5d? | 2023-04-16 | 2023-04-17 | 13 | 100% | 2023-04-16 | 2023-04-17 | start no earlier than 2023-04-10 | Breno |
| 16 | 1.2.1.3.2 | Revisar Cronograma Preliminar | 0.75d? | 2023-04-18 | 2023-04-18 | 15 | 100% | 2023-04-18 | 2023-04-18 | start no earlier than 2023-04-16 | Breno |
| 17 | 1.2.1.4 | **MRB** | 6d? | 2023-04-19 | 2023-04-21 |  | 100% | 2023-04-19 | 2023-04-21 | start no earlier than 2023-04-16 |  |
| 18 | 1.2.1.4.1 | Elaborar MRB | 1.5d? | 2023-04-19 | 2023-04-20 | 16 | 100% | 2023-04-19 | 2023-04-20 | start no earlier than 2023-04-16 | Matheus |
| 19 | 1.2.1.4.2 | Revisar MRB | 0.5d? | 2023-04-21 | 2023-04-21 | 18 | 100% | 2023-04-21 | 2023-04-21 | start no earlier than 2023-04-16 | Matheus |
| 20 | 1.3 | **Projeto** | 10d | 2023-04-22 | 2023-04-26 |  | 100% | 2023-04-22 | 2023-04-26 | start no earlier than 2023-04-17 |  |
| 21 | 1.3.1 | **Diagrama de Classes** | 10d | 2023-04-22 | 2023-04-26 |  | 100% | 2023-04-22 | 2023-04-26 | start no earlier than 2023-04-17 |  |
| 22 | 1.3.1.1 | Elaborar Diagrama de Classe | 2.25d | 2023-04-22 | 2023-04-24 | 19 | 100% | 2023-04-22 | 2023-04-24 | start no earlier than 2023-04-17 | João |
| 23 | 1.3.1.2 | Revisar Diagrama de Classe | 0.25d | 2023-04-25 | 2023-04-25 | 22 | 100% | 2023-04-25 | 2023-04-25 | start no earlier than 2023-04-17 | João |
| 24 | 1.3.1.3 | Atualizar MRB | 0.5d | 2023-04-26 | 2023-04-26 | 23 | 100% | 2023-04-26 | 2023-04-26 | start no earlier than 2023-04-18 | João |

| ID | WBS | Task | Duration | Start | Finish | Predecessors | Complete | Baseline start | Baseline finish | Constraint | Resources |
| --- | --- | --- | --- | --- | --- | --- | --- | --- | --- | --- | --- |
| 25 | 1.4 | **Planejamento** | 14d | 2023-04-27 | 2023-05-03 |  | 100% | 2023-04-27 | 2023-05-03 | start no earlier than 2023-04-18 |  |
| 26 | 1.4.1 | Pesquisar Soluções Existentes | 4d | 2023-04-27 | 2023-04-30 | 24 | 100% | 2023-04-27 | 2023-04-30 | start no earlier than 2023-04-18 | Caio |
| 27 | 1.4.2 | Definir Linguagens e Frameworks | 1.5d | 2023-05-01 | 2023-05-02 | 26 | 100% | 2023-05-01 | 2023-05-02 | start no earlier than 2023-04-18 | Breno |
| 28 | 1.4.3 | Revisar Divisão de tarefas | 1d | 2023-05-03 | 2023-05-03 | 27 | 100% | 2023-05-03 | 2023-05-03 | start no earlier than 2023-04-18 | Matheus |
| 29 | 1.5 | **Desenvolvimento** | 100d? | 2023-05-04 | 2023-06-22 |  | 100% | 2023-05-04 | 2023-06-19 | start no earlier than 2023-04-25 |  |
| 30 | 1.5.1 | **Release 01** | 34d | 2023-05-04 | 2023-05-20 |  | 100% | 2023-05-04 | 2023-05-20 | start no earlier than 2023-04-25 |  |
| 31 | 1.5.1.1 | **Implementação** | 26d | 2023-05-04 | 2023-05-16 |  | 100% | 2023-05-04 | 2023-05-16 | start no earlier than 2023-04-25 |  |
| 32 | 1.5.1.1.1 | **Manter Usuário - RC01** | 18d | 2023-05-04 | 2023-05-12 |  | 100% | 2023-05-04 | 2023-05-12 | start no earlier than 2023-04-25 |  |
| 33 | 1.5.1.1.1.1 | Implementar RFS01 - Inserir Usuário | 2.5d | 2023-05-04 | 2023-05-06 | 28 | 100% | 2023-05-04 | 2023-05-06 | start no earlier than 2023-04-25 | Adriano |
| 34 | 1.5.1.1.1.2 | Implementar RFS03 - Consultar Usuário | 0.5d | 2023-05-11 | 2023-05-11 | 33 | 100% | 2023-05-11 | 2023-05-11 | start no earlier than 2023-05-08 | João |
| 35 | 1.5.1.1.1.3 | Implementar RFS04 - Remover Usuário | 0.5d | 2023-05-12 | 2023-05-12 | 34 | 100% | 2023-05-12 | 2023-05-12 | start no earlier than 2023-05-08 | Matheus |
| 36 | 1.5.1.1.2 | **Manter República - RC02** | 8d | 2023-05-13 | 2023-05-16 |  | 100% | 2023-05-13 | 2023-05-16 | start no earlier than 2023-05-08 |  |
| 37 | 1.5.1.1.2.1 | Implementar RFS13 - Inserir República | 0.75d | 2023-05-13 | 2023-05-13 | 35 | 100% | 2023-05-13 | 2023-05-13 | start no earlier than 2023-05-08 | Matheus |
| 38 | 1.5.1.1.2.2 | Implementar RFS15 - Consultar República | 0.75d | 2023-05-15 | 2023-05-15 | 37 | 100% | 2023-05-15 | 2023-05-15 | start no earlier than 2023-05-01 | João |
| 39 | 1.5.1.1.2.3 | Implementar RFS16 - Remover República | 0.75d | 2023-05-16 | 2023-05-16 | 38 | 100% | 2023-05-16 | 2023-05-16 | start no earlier than 2023-05-01 | Matheus |
| 40 | 1.5.1.2 | **Testes Release 01** | 8d | 2023-05-17 | 2023-05-20 |  | 100% | 2023-05-17 | 2023-05-20 | start no earlier than 2023-05-01 |  |
| 41 | 1.5.1.2.1 | Testar RC01 - Manter Usuário | 2d | 2023-05-17 | 2023-05-18 | 39 | 100% | 2023-05-17 | 2023-05-18 | start no earlier than 2023-05-01 | Breno |
| 42 | 1.5.1.2.2 | Testar RC02 - Manter República | 2d | 2023-05-19 | 2023-05-20 | 41 | 100% | 2023-05-19 | 2023-05-20 | start no earlier than 2023-05-01 | Adriano |
| 43 | 1.5.2 | **Release 02** | 22d | 2023-05-21 | 2023-05-31 |  | 100% | 2023-05-21 | 2023-05-31 | start no earlier than 2023-05-16 |  |
| 44 | 1.5.2.1 | **Implementações** | 18d | 2023-05-21 | 2023-05-29 |  | 100% | 2023-05-21 | 2023-05-29 | start no earlier than 2023-05-16 |  |
| 45 | 1.5.2.1.1 | **Manter Kitnet - RC04** | 18d | 2023-05-21 | 2023-05-29 |  | 100% | 2023-05-21 | 2023-05-29 | start no earlier than 2023-05-16 |  |
| 46 | 1.5.2.1.1.1 | Implementar RFS17 - Inserir Kitnet | 2.5d | 2023-05-21 | 2023-05-23 | 42 | 100% | 2023-05-21 | 2023-05-23 | start no earlier than 2023-05-16 | Matheus |
| 47 | 1.5.2.1.1.2 | Implementar RFS19 - Consultar Kitnet | 2d | 2023-05-26 | 2023-05-27 | 46 | 100% | 2023-05-26 | 2023-05-27 | start no earlier than 2023-05-16 | Matheus |
| 48 | 1.5.2.1.1.3 | Implementar RFS20 - Remover Kitnet | 2d | 2023-05-28 | 2023-05-29 | 47 | 100% | 2023-05-28 | 2023-05-29 | start no earlier than 2023-05-16 | João |

| ID | WBS | Task | Duration | Start | Finish | Predecessors | Complete | Baseline start | Baseline finish | Constraint | Resources |
| --- | --- | --- | --- | --- | --- | --- | --- | --- | --- | --- | --- |
| 49 | 1.5.2.2 | **Testes Release 02** | 4d | 2023-05-30 | 2023-05-31 |  | 100% | 2023-05-30 | 2023-05-31 | start no earlier than 2023-05-16 |  |
| 50 | 1.5.2.2.1 | Testar RC04 - Manter Kitnet | 1.5d | 2023-05-30 | 2023-05-31 | 48 | 100% | 2023-05-30 | 2023-05-31 |  | João |
| 51 | 1.5.3 | **Release 03** | 20d | 2023-06-01 | 2023-06-10 |  | 100% | 2023-06-01 | 2023-06-12 |  |  |
| 52 | 1.5.3.1 | **Implementações** | 16d | 2023-06-01 | 2023-06-08 |  | 100% | 2023-06-01 | 2023-06-10 | start no earlier than 2023-05-16 |  |
| 53 | 1.5.3.1.1 | **Manter Vagas - RC03** | 16d | 2023-06-01 | 2023-06-08 |  | 100% | 2023-06-01 | 2023-06-10 |  |  |
| 54 | 1.5.3.1.1.1 | Implementar RFS09 - Inserir Vaga | 2.5d | 2023-06-01 | 2023-06-03 | 50 | 100% | 2023-06-01 | 2023-06-03 |  | João |
| 55 | 1.5.3.1.1.2 | Implementar RFS11 - Consultar Vaga | 2d | 2023-06-07 | 2023-06-08 | 54 | 100% | 2023-06-07 | 2023-06-08 |  | João |
| 56 | 1.5.3.2 | **Testes Release 03** | 4d | 2023-06-09 | 2023-06-10 |  | 100% | 2023-06-11 | 2023-06-12 | start no earlier than 2023-05-23 |  |
| 57 | 1.5.3.2.1 | Testar RC03 - Manter Vagas | 1.25d | 2023-06-09 | 2023-06-10 | 55 | 100% | 2023-06-11 | 2023-06-12 | start no earlier than 2023-05-23 | Adriano |
| 58 | 1.5.4 | **Release 04** | 20d? | 2023-06-13 | 2023-06-22 |  | 100% | 2023-06-13 | 2023-06-19 |  |  |
| 59 | 1.5.4.1 | **Implementações** | 18d? | 2023-06-13 | 2023-06-21 |  | 100% | 2023-06-13 | 2023-06-18 |  |  |
| 60 | 1.5.4.1.1 | Implementar RFS02 - Alterar Usuário | 2d | 2023-06-13 | 2023-06-14 | 57 | 100% | 2023-06-13 | 2023-06-18 | start no earlier than 2023-05-25 | Breno |
| 61 | 1.5.4.1.2 | Implementar RFS10 - Alterar Vaga | 2d | 2023-06-15 | 2023-06-16 | 60 | 100% | 2023-06-13 | 2023-06-14 | start no earlier than 2023-05-25 | Matheus |
| 62 | 1.5.4.1.3 | Implementar RFS12 - Remover Vaga | 2d | 2023-06-17 | 2023-06-18 | 61 | 100% | 2023-06-15 | 2023-06-16 | start no earlier than 2023-05-26 | Breno |
| 63 | 1.5.4.1.4 | Implementar RFS14 - Alterar República | 2d | 2023-06-18 | 2023-06-19 | 62 | 100% | 2023-06-17 | 2023-06-18 | start no earlier than 2023-05-26 | João |
| 64 | 1.5.4.1.5 | Implementar RFS18 - Alterar Kitnet | 1d? | 2023-06-20 | 2023-06-20 | 63 | 100% |  |  |  | Caio |
| 65 | 1.5.4.1.6 | Deploy do Projeto | 1d? | 2023-06-21 | 2023-06-21 | 64 | 100% |  |  |  | Caio |
| 66 | 1.5.4.2 | **Testes Release 04** | 2d | 2023-06-22 | 2023-06-22 |  | 100% | 2023-06-19 | 2023-06-19 |  |  |
| 67 | 1.5.4.2.1 | Implementar Testes RC 06 | 1d | 2023-06-22 | 2023-06-22 | 65 | 100% | 2023-06-19 | 2023-06-19 |  | Breno |
| 68 | 1.6 | **Monitoramento e Controle** | 8d | 2023-06-21 | 2023-06-24 |  | 100% | 2023-06-20 | 2023-06-24 | start no earlier than 2023-05-24 |  |
| 69 | 1.6.1 | Acompanhar Projeto | 0.75d | 2023-06-23 | 2023-06-23 | 67 | 100% | 2023-06-20 | 2023-06-20 | start no earlier than 2023-05-26 | Caio |
| 70 | 1.6.2 | **Gerência de Configuração** | 8d | 2023-06-21 | 2023-06-24 |  | 100% | 2023-06-21 | 2023-06-24 | start no earlier than 2023-05-24 |  |
| 71 | 1.6.2.1 | Elaborar Branch | 1.5d | 2023-06-21 | 2023-06-22 | 69 | 100% | 2023-06-21 | 2023-06-22 | start no earlier than 2023-05-26 | Matheus |
| 72 | 1.6.2.2 | Realizar Merge da Branch X para a Master | 1.5d | 2023-06-23 | 2023-06-24 | 71 | 100% | 2023-06-23 | 2023-06-24 | start no earlier than 2023-05-24 | Matheus |

| ID | WBS | Task | Duration | Start | Finish | Predecessors | Complete | Baseline start | Baseline finish | Constraint | Resources |
| --- | --- | --- | --- | --- | --- | --- | --- | --- | --- | --- | --- |
| 73 | 1.7 | **Fechamento** | 16d | 2023-06-25 | 2023-07-02 |  | 46% | 2023-06-25 | 2023-06-30 | start no earlier than 2023-05-25 |  |
| 74 | 1.7.1 | Teste do Sistema | 1.5d | 2023-06-25 | 2023-06-26 | 72 | 100% | 2023-06-25 | 2023-06-25 | start no earlier than 2023-05-25 | Caio |
| 75 | 1.7.2 | **Aprovaçao do Cliente** | 12d | 2023-06-27 | 2023-07-02 |  | 30% | 2023-06-25 | 2023-06-30 | start no earlier than 2023-05-26 |  |
| 76 | 1.7.2.1 | Controle de Mudanças | 1.5d | 2023-06-27 | 2023-06-28 | 74 | 100% | 2023-06-25 | 2023-06-26 | start no earlier than 2023-05-26 | Caio |
| 77 | 1.7.2.2 | Realizar Mudanças Solicitas pelo Cliente | 3.5d | 2023-06-29 | 2023-07-02 | 76 |  | 2023-06-27 | 2023-06-30 | start no earlier than 2023-05-31 | Adriano |
